# Mobile Fog–Based Intelligent Monitoring System

Schedule from ProjectLibre, 2026-01-16 to 2026-04-17.

## Calendars

- Standard: Mon-Fri 08:00-12:00, 13:00-17:00; Sat-Sun off.

## Resources

| Resource | Rate | Notes |
| --- | --- | --- |
| Unassigned |  |  |
| Pushkal | 150 | Pushkal Gupta 23BCT0253 |
| Vaibhav | 150 | Vaibhav Jain 23BAI0033 |
| Adrivid | 150 | Adrivid Mishra 23BCT0264 |
| Shagnik | 150 | Shagnik Paul 23BCT0266 |

## Schedule

| ID | WBS | Task | Duration | Start | Finish | Predecessors | Constraint | Resources |
| --- | --- | --- | --- | --- | --- | --- | --- | --- |
| 1 | 1 | Start | 0d | 2026-01-16 | 2026-01-16 |  |  |  |
| 2 | 2 | **Initiation** | 3d | 2026-01-16 | 2026-01-20 |  |  |  |
| 3 | 2.1 | Project kick-off & objectives | 0.5d | 2026-01-16 | 2026-01-16 | 1 |  | Adrivid; Pushkal; Shagnik; Vaibhav |
| 4 | 2.2 | Scope definition & constraints | 0.5d | 2026-01-16 | 2026-01-16 | 3 |  | Adrivid; Pushkal; Shagnik; Vaibhav |
| 5 | 2.3 | Problem understanding & scope finalization | 0.5d | 2026-01-19 | 2026-01-19 | 4 | start no earlier than 2026-01-17 | Pushkal |
| 6 | 2.4 | Project schedule & risk plan | 0.5d | 2026-01-19 | 2026-01-19 | 5 |  | Pushkal |
| 7 | 2.5 | System architecture & responsibility locking | 1d | 2026-01-20 | 2026-01-20 | 6 |  | Pushkal |
| 8 | 3 | **Requirement** | 5.5d | 2026-01-21 | 2026-01-28 |  |  |  |
| 9 | 3.1 | Stakeholder identification | 1d | 2026-01-21 | 2026-01-21 | 7 |  | Adrivid; Pushkal; Shagnik; Vaibhav |
| 10 | 3.2 | Functional requirements elicitation | 1d | 2026-01-22 | 2026-01-22 | 9 |  | Adrivid; Pushkal; Shagnik; Vaibhav |
| 11 | 3.3 | Non-functional requirements | 1d | 2026-01-23 | 2026-01-23 | 10 |  | Adrivid; Pushkal; Shagnik; Vaibhav |
| 12 | 3.4 | Requirement analysis & prioritization | 1d | 2026-01-26 | 2026-01-26 | 11 |  | Adrivid; Pushkal; Shagnik; Vaibhav |
| 13 | 3.5 | SRS documentation & approval | 1.5d | 2026-01-27 | 2026-01-28 | 12 |  | Adrivid; Pushkal; Shagnik; Vaibhav |
| 14 | 4 | **Design** | 5.5d | 2026-01-28 | 2026-02-04 |  |  |  |
| 15 | 4.1 | System Architecture Design | 1.5d | 2026-01-28 | 2026-01-29 | 13 |  | Pushkal |
| 16 | 4.2 | UI/UX and Dashboard / Backend Overview | 0.5d | 2026-02-03 | 2026-02-03 | 15 | start no earlier than 2026-02-03 | Pushkal; Shagnik; Vaibhav |
| 17 | 4.3 | Model Overview and Dataset selection | 0.5d | 2026-02-04 | 2026-02-04 | 16 |  | Pushkal; Vaibhav |
| 18 | 4.4 | Hardware Overview and Component selection | 0.5d | 2026-02-04 | 2026-02-04 | 17 |  | Adrivid; Pushkal |
| 19 | 5 | **Development** | 41.5d | 2026-02-05 | 2026-04-03 |  |  |  |
| 20 | 5.1 | **Hardware and Embedded** | 25d | 2026-02-05 | 2026-03-11 |  |  |  |
| 21 | 5.1.1 | CT sensor selection & wiring | 2d | 2026-02-05 | 2026-02-06 | 18 |  | Adrivid |
| 22 | 5.1.2 | Burden resistor & safety validation | 2d | 2026-02-09 | 2026-02-10 | 21 | start no earlier than 2026-02-05 | Adrivid |
| 23 | 5.1.3 | ESP32 ADC sampling firmware | 3d | 2026-02-11 | 2026-02-13 | 22 |  | Adrivid |
| 24 | 5.1.4 | Wi-Fi, MQTT publish & relay control | 2d | 2026-02-16 | 2026-02-17 | 23 |  | Adrivid; Pushkal |
| 25 | 5.1.5 | Fog Received Critical System Actuation | 2d | 2026-03-10 | 2026-03-11 | 52 | start no earlier than 2026-02-16 | Adrivid; Pushkal |

| ID | WBS | Task | Duration | Start | Finish | Predecessors | Constraint | Resources |
| --- | --- | --- | --- | --- | --- | --- | --- | --- |
| 26 | 5.2 | **Fog(Phone) Logic & System Behavior** | 39.5d | 2026-02-05 | 2026-04-01 |  |  |  |
| 27 | 5.2.1 | MQTT Receive Data from Car | 2d | 2026-02-05 | 2026-02-06 | 18 |  | Pushkal |
| 28 | 5.2.2 | Feature extraction (RMS, FFT, THD) | 2d | 2026-02-09 | 2026-02-10 | 27 |  | Pushkal |
| 29 | 5.2.3 | JSON schema & MQTT topic design | 3d | 2026-02-11 | 2026-02-16 | 28 | start no earlier than 2026-02-11 | Pushkal |
| 30 | 5.2.4 | Fog decision engine & safety logic | 2d | 2026-02-18 | 2026-02-19 | 24 |  | Pushkal; Vaibhav |
| 31 | 5.2.5 | Offline Mode Predictive Repair Suggestions Logic | 2d | 2026-03-30 | 2026-04-01 | 25 | start no earlier than 2026-03-30 | Adrivid; Pushkal |
| 32 | 5.3 | **AI and Data Handling** | 40.5d | 2026-02-05 | 2026-04-02 |  |  |  |
| 33 | 5.3.1 | Dataset preparation & labeling | 2d | 2026-02-05 | 2026-02-06 | 18 |  | Vaibhav |
| 34 | 5.3.2 | Model Selection and Ouput Schema Design | 2d | 2026-02-09 | 2026-02-10 | 33 |  | Vaibhav |
| 35 | 5.3.3 | Feature-based ML model training | 3d | 2026-02-11 | 2026-02-16 | 34 | start no earlier than 2026-02-11 | Vaibhav |
| 36 | 5.3.4 | Fog(Phone) AI (TFLite) optimization | 2d | 2026-02-20 | 2026-02-23 | 30 |  | Pushkal; Vaibhav |
| 37 | 5.3.5 | Model validation & accuracy report | 1d | 2026-04-01 | 2026-04-02 | 31 | start no earlier than 2026-02-20 | Vaibhav |
| 38 | 5.4 | **Backend Development** | 21d | 2026-02-05 | 2026-03-05 |  |  |  |
| 39 | 5.4.1 | Server and Database Setup | 1d | 2026-02-05 | 2026-02-05 | 18 |  | Shagnik |
| 40 | 5.4.2 | Database Model | 1d | 2026-02-24 | 2026-02-24 | 36 |  | Pushkal; Shagnik |
| 41 | 5.4.3 | AI Model Deployment and Backend Integration | 1d | 2026-02-25 | 2026-02-25 | 40 |  | Shagnik; Vaibhav |
| 42 | 5.4.4 | **Endpoint creation** | 6d | 2026-02-26 | 2026-03-05 |  |  |  |
| 43 | 5.4.4.1 | upload (fog data to cloud upload endpoint) | 2d | 2026-02-26 | 2026-02-27 | 41 |  | Pushkal; Shagnik |
| 44 | 5.4.4.2 | analyse(ai model analyse endpoint) | 2d | 2026-03-02 | 2026-03-03 | 43 |  | Shagnik; Vaibhav |
| 45 | 5.4.4.3 | Miscellaneous Enpoints | 2d | 2026-03-04 | 2026-03-05 | 44 |  | Adrivid; Pushkal; Shagnik; Vaibhav |
| 46 | 5.5 | **Frontend Development** | 40.5d | 2026-02-06 | 2026-04-03 |  |  |  |
| 47 | 5.5.1 | Web Dashboard | 2d | 2026-02-06 | 2026-02-09 | 39 |  | Shagnik |
| 48 | 5.5.2 | Android UI | 2d | 2026-02-10 | 2026-02-11 | 47 |  | Shagnik |
| 49 | 5.5.3 | User UI | 1d | 2026-02-12 | 2026-02-12 | 48 |  | Shagnik |
| 50 | 5.5.4 | Dealership UI | 1d | 2026-02-13 | 2026-02-13 | 49 |  | Shagnik |
| 51 | 5.5.5 | Event visualization & logs | 1d | 2026-03-06 | 2026-03-06 | 45 |  | Pushkal; Shagnik |
| 52 | 5.5.6 | Report Generation - Visual Logs for User | 1d | 2026-03-09 | 2026-03-09 | 51 |  | Pushkal; Shagnik; Vaibhav |
| 53 | 5.5.7 | Digital Twin Visualization | 1d | 2026-04-02 | 2026-04-03 | 37 |  | Shagnik |

| ID | WBS | Task | Duration | Start | Finish | Predecessors | Constraint | Resources |
| --- | --- | --- | --- | --- | --- | --- | --- | --- |
| 54 | 6 | **Integration** | 4d | 2026-04-03 | 2026-04-09 |  |  |  |
| 55 | 6.1 | Device to Fog Module Integration | 1d | 2026-04-03 | 2026-04-06 | 53 |  | Adrivid; Pushkal |
| 56 | 6.2 | Fog to Cloud Integration | 1d | 2026-04-06 | 2026-04-07 | 55 |  | Pushkal; Shagnik; Vaibhav |
| 57 | 6.3 | DB to Backend Intergation | 0.5d | 2026-04-07 | 2026-04-07 | 56 |  | Pushkal; Shagnik; Vaibhav |
| 58 | 6.4 | Model Integration | 0.5d | 2026-04-08 | 2026-04-08 | 57 |  | Pushkal; Shagnik; Vaibhav |
| 59 | 6.5 | Frontend to Backend Integration | 0.5d | 2026-04-08 | 2026-04-08 | 58 |  | Shagnik |
| 60 | 6.6 | Hardware Integration | 0.5d | 2026-04-09 | 2026-04-09 | 59 | start no earlier than 2026-04-08 | Adrivid; Pushkal |
| 61 | 7 | **Testing** | 4d | 2026-04-09 | 2026-04-15 |  |  |  |
| 62 | 7.1 | System and Integration Testing | 1d | 2026-04-09 | 2026-04-10 | 60 |  | Adrivid; Pushkal; Shagnik; Vaibhav |
| 63 | 7.2 | Bug fixing and Regression Testing | 1d | 2026-04-10 | 2026-04-13 | 62 |  | Adrivid; Pushkal; Shagnik; Vaibhav |
| 64 | 7.3 | Azure Deployment environment setup | 1d | 2026-04-13 | 2026-04-14 | 63 |  | Pushkal; Shagnik; Vaibhav |
| 65 | 7.4 | Final configuration & smoke testing | 1d | 2026-04-14 | 2026-04-15 | 64 |  | Adrivid; Pushkal; Shagnik; Vaibhav |
| 66 | 8 | **Closure** | 2d | 2026-04-15 | 2026-04-17 |  |  |  |
| 67 | 8.1 | User training & documentation | 1d | 2026-04-15 | 2026-04-16 | 65 |  | Adrivid; Pushkal; Shagnik; Vaibhav |
| 68 | 8.2 | Project closure & handover | 1d | 2026-04-16 | 2026-04-17 | 67 |  | Adrivid; Pushkal; Shagnik; Vaibhav |
| 69 | 9 | Finish | 0d | 2026-04-17 | 2026-04-17 | 68 |  |  |
